# Dự án xây dựng hệ thống quản lý thu phí tự động ETC

Schedule from MS Project, 2023-03-06 to 2023-05-23, status date 2023-04-20, costs in ₫, A marks actual dates.
Công ty TNHH thu phí tự động VETC
Dự án bắt đầu ngày: 06/03/2023 / Dự án kết thúc ngày: 23/05/2023 / Tổng mức chi phí cho dự án là: 172,787,500đ

## Calendars

- Lịch làm việc: Mon-Fri 08:00-12:00, 13:00-17:00; Sat-Sun off. Exceptions (off unless hours are given): 2023-04-29 (Giỗ tổ Hùng Vương), 2023-04-30 to 2023-05-02 (30/4 - 1/5).
- LichHop: Mon 15:00-17:00; Tue-Sun off. Exceptions (off unless hours are given): 2023-04-29 (Giỗ tổ Hùng Vương), 2023-04-30 to 2023-05-02 (30/4 - 1/5).

## Resources

| Resource | Unit | Rate |
| --- | --- | --- |
| Nguyễn Thị Kim Kiều |  | 156250 |
| Lâm Hồ Thiên Tống |  | 156250 |
| Vũ Tường Nguyên |  | 93750 |
| Lê Trần Duy Tài |  | 125000 |
| Vũ Vương Vinh |  | 125000 |
| Lâm Nhất Đức Duy |  | 93750 |
| Phạm Trịnh Ngọc Hân |  | 62500 |
| Hoàng Nhật Minh |  | 125000 |
| Mực in | Hộp | 150000 |
| Giấy in | Gram | 95000 |
| Máy in | Lượt | 15000 |

## Schedule

| ID | WBS | Task | Type | Duration | Start | Finish | Predecessors | Complete | Baseline start | Baseline finish | Baseline duration | Resources | Work | Actual work | Cost | Baseline cost | Actual cost |
| --- | --- | --- | --- | --- | --- | --- | --- | --- | --- | --- | --- | --- | --- | --- | --- | --- | --- |
| 1 | 1 | Lập kế hoạch cho dự án |  | 1d | 2023-03-06 08:00 A | 2023-03-06 17:00 A |  | 100% | 2023-03-06 08:00 | 2023-03-06 17:00 | 1d | Lâm Hồ Thiên Tống; Nguyễn Thị Kim Kiều | 16h | 16h | 2,500,000 | 2,500,000 | 2,500,000 |
| 2 | 2 | **Khảo sát hiện trạng và nhu cầu** |  | 7d | 2023-03-07 08:00 A | 2023-03-15 17:00 A |  | 100% | 2023-03-07 08:00 | 2023-03-15 17:00 | 7d |  | 88h | 88h | 10,250,000 | 10,250,000 | 10,250,000 |
| 3 | 2.1 | **Khảo sát hiện trạng HTTT hiện hữu của hệ thống thu phí tự động ETC** |  | 6d | 2023-03-07 08:00 A | 2023-03-14 17:00 A |  | 100% | 2023-03-07 08:00 | 2023-03-14 17:00 | 6d |  | 80h | 80h | 9,500,000 | 9,500,000 | 9,500,000 |
| 4 | 2.1.1 | Khảo sát hiện trạng phần cứng |  | 2d | 2023-03-07 08:00 A | 2023-03-08 17:00 A | 1 | 100% | 2023-03-07 08:00 | 2023-03-08 17:00 | 2d | Lâm Nhất Đức Duy | 16h | 16h | 1,500,000 | 1,500,000 | 1,500,000 |
| 5 | 2.1.2 | Khảo sát hiện trạng phần mềm |  | 2d | 2023-03-09 08:00 A | 2023-03-10 17:00 A | 4 | 100% | 2023-03-09 08:00 | 2023-03-10 17:00 | 2d | Lâm Nhất Đức Duy | 16h | 16h | 1,500,000 | 1,500,000 | 1,500,000 |
| 6 | 2.1.3 | Khảo sát hiện trạng về dữ liệu và CSDL |  | 1.5d | 2023-03-07 08:00 A | 2023-03-08 12:00 A | 4SS | 100% | 2023-03-07 08:00 | 2023-03-08 12:00 | 1.5d | Nguyễn Thị Kim Kiều | 12h | 12h | 1,875,000 | 1,875,000 | 1,875,000 |
| 7 | 2.1.4 | Khảo sát hiện trạng về quy trình nghiệp vụ |  | 1.5d | 2023-03-08 13:00 A | 2023-03-09 17:00 A | 6 | 100% | 2023-03-08 13:00 | 2023-03-09 17:00 | 1.5d | Nguyễn Thị Kim Kiều | 12h | 12h | 1,875,000 | 1,875,000 | 1,875,000 |
| 8 | 2.1.5 | Khảo sát hiện trạng về cơ cấu tổ chức |  | 0.5d | 2023-03-13 08:00 A | 2023-03-13 12:00 A | 5 | 100% | 2023-03-13 08:00 | 2023-03-13 12:00 | 0.5d | Lâm Nhất Đức Duy | 4h | 4h | 375,000 | 375,000 | 375,000 |
| 9 | 2.1.6 | Khảo sát hiện trạng về con người |  | 0.5d | 2023-03-13 13:00 A | 2023-03-13 17:00 A | 8 | 100% | 2023-03-13 13:00 | 2023-03-13 17:00 | 0.5d | Lâm Nhất Đức Duy | 4h | 4h | 375,000 | 375,000 | 375,000 |
| 10 | 2.1.7 | Viết báo cáo kết quả khảo sát hiện trạng |  | 1d | 2023-03-14 08:00 A | 2023-03-14 17:00 A | 9 | 100% | 2023-03-14 08:00 | 2023-03-14 17:00 | 1d | Lâm Nhất Đức Duy; Nguyễn Thị Kim Kiều | 16h | 16h | 2,000,000 | 2,000,000 | 2,000,000 |
| 11 | 2.2 | **Khảo sát nhu cầu** |  | 1d | 2023-03-15 08:00 A | 2023-03-15 17:00 A |  | 100% | 2023-03-15 08:00 | 2023-03-15 17:00 | 1d |  | 8h | 8h | 750,000 | 750,000 | 750,000 |
| 12 | 2.2.1 | Khảo sát nhu cầu quản lý |  | 0.5d | 2023-03-15 08:00 A | 2023-03-15 12:00 A | 10 | 100% | 2023-03-15 08:00 | 2023-03-15 12:00 | 0.5d | Lâm Nhất Đức Duy | 4h | 4h | 375,000 | 375,000 | 375,000 |
| 13 | 2.2.2 | Viết báo cáo kết quả khảo sát nhu cầu |  | 0.5d | 2023-03-15 13:00 A | 2023-03-15 17:00 A | 12 | 100% | 2023-03-15 13:00 | 2023-03-15 17:00 | 0.5d | Lâm Nhất Đức Duy | 4h | 4h | 375,000 | 375,000 | 375,000 |
| 14 | 2.3 | Hoàn thành khảo sát hiện trạng và nhu cầu | milestone | 0d | 2023-03-15 17:00 A | 2023-03-15 17:00 A | 13 | 100% | 2023-03-15 17:00 | 2023-03-15 17:00 | 0d |  |  |  |  |  |  |
| 15 | 3 | Xác định và mô tả chức năng của hệ thống |  | 1.5d | 2023-03-16 08:00 A | 2023-03-17 12:00 A | 14 | 100% | 2023-03-16 08:00 | 2023-03-17 12:00 | 1.5d | Lâm Nhất Đức Duy; Nguyễn Thị Kim Kiều | 24h | 24h | 3,000,000 | 3,000,000 | 3,000,000 |
| 16 | 4 | **Thiết kế cơ sở dữ liệu** |  | 2d | 2023-03-17 13:00 A | 2023-03-21 12:00 A |  | 100% | 2023-03-17 13:00 | 2023-03-21 12:00 | 2d |  | 16h | 16h | 2,500,000 | 2,500,000 | 2,500,000 |
| 17 | 4.1 | **Mô tả dữ liệu mức quan niệm** |  | 1d | 2023-03-17 13:00 A | 2023-03-20 12:00 A |  | 100% | 2023-03-17 13:00 | 2023-03-20 12:00 | 1d |  | 8h | 8h | 1,250,000 | 1,250,000 | 1,250,000 |
| 18 | 4.1.1 | Mô tả mối quan hệ giữa các thực thể |  | 3h | 2023-03-17 13:00 A | 2023-03-17 16:00 A | 15 | 100% | 2023-03-17 13:00 | 2023-03-17 16:00 | 3h | Nguyễn Thị Kim Kiều | 3h | 3h | 468,750 | 468,750 | 468,750 |
| 19 | 4.1.2 | Mô tả chi tiết các thực thể và phân tích từng bảng thực thể |  | 0.5d | 2023-03-17 16:00 A | 2023-03-20 11:00 A | 18 | 100% | 2023-03-17 16:00 | 2023-03-20 11:00 | 0.5d | Nguyễn Thị Kim Kiều | 4h | 4h | 625,000 | 625,000 | 625,000 |
| 20 | 4.1.3 | Vẽ ERD |  | 1h | 2023-03-20 11:00 A | 2023-03-20 12:00 A | 19 | 100% | 2023-03-20 11:00 | 2023-03-20 12:00 | 1h | Nguyễn Thị Kim Kiều | 1h | 1h | 156,250 | 156,250 | 156,250 |
| 21 | 4.2 | Mô hình dữ liệu quan hệ |  | 1d | 2023-03-20 13:00 A | 2023-03-21 12:00 A | 20 | 100% | 2023-03-20 13:00 | 2023-03-21 12:00 | 1d | Nguyễn Thị Kim Kiều | 8h | 8h | 1,250,000 | 1,250,000 | 1,250,000 |
| 22 | 5 | **Cài đặt cơ sở dữ liệu** |  | 2.5d | 2023-03-21 13:00 A | 2023-03-23 17:00 A |  | 100% | 2023-03-21 13:00 | 2023-03-23 17:00 | 2.5d |  | 21h | 21h | 2,656,250 | 2,656,250 | 2,656,250 |
| 23 | 5.1 | Cài đặt bảng trong Oracle |  | 3h | 2023-03-21 13:00 A | 2023-03-21 16:00 A | 21 | 100% | 2023-03-21 13:00 | 2023-03-21 16:00 | 3h | Lê Trần Duy Tài | 3h | 3h | 375,000 | 375,000 | 375,000 |
| 24 | 5.2 | Vẽ sơ đồ Diagram |  | 1h | 2023-03-21 16:00 A | 2023-03-21 17:00 A | 23 | 100% | 2023-03-21 16:00 | 2023-03-21 17:00 | 1h | Lê Trần Duy Tài; Nguyễn Thị Kim Kiều | 2h | 2h | 281,250 | 281,250 | 281,250 |
| 25 | 5.3 | Nhập dữ liệu mẫu |  | 2d | 2023-03-22 08:00 A | 2023-03-23 17:00 A | 24 | 100% | 2023-03-22 08:00 | 2023-03-23 17:00 | 2d | Lê Trần Duy Tài | 16h | 16h | 2,000,000 | 2,000,000 | 2,000,000 |

| ID | WBS | Task | Type | Duration | Start | Finish | Predecessors | Complete | Baseline start | Baseline finish | Baseline duration | Resources | Work | Actual work | Cost | Baseline cost | Actual cost |
| --- | --- | --- | --- | --- | --- | --- | --- | --- | --- | --- | --- | --- | --- | --- | --- | --- | --- |
| 26 | 6 | **Thiết kế giao diện** |  | 2.25d | 2023-03-17 13:00 A | 2023-03-21 15:00 A |  | 100% | 2023-03-17 13:00 | 2023-03-21 15:00 | 2.25d |  | 36h | 36h | 3,937,500 | 3,937,500 | 3,937,500 |
| 27 | 6.1 | Giao diện quản lý user |  | 3h | 2023-03-17 13:00 A | 2023-03-17 16:00 A | 15 | 100% | 2023-03-17 13:00 | 2023-03-17 16:00 | 3h | Vũ Vương Vinh; Lâm Nhất Đức Duy | 6h | 6h | 656,250 | 656,250 | 656,250 |
| 28 | 6.2 | Giao diện quản lý thông tin nhân viên |  | 3h | 2023-03-17 16:00 A | 2023-03-20 10:00 A | 27 | 100% | 2023-03-17 16:00 | 2023-03-20 10:00 | 3h | Vũ Vương Vinh; Lâm Nhất Đức Duy | 6h | 6h | 656,250 | 656,250 | 656,250 |
| 29 | 6.3 | Giao diện quản lý thông tin khách hàng |  | 3h | 2023-03-20 10:00 A | 2023-03-20 14:00 A | 28 | 100% | 2023-03-20 10:00 | 2023-03-20 14:00 | 3h | Vũ Vương Vinh; Lâm Nhất Đức Duy | 6h | 6h | 656,250 | 656,250 | 656,250 |
| 30 | 6.4 | Giao diện quản lý thông tin xe |  | 3h | 2023-03-20 14:00 A | 2023-03-20 17:00 A | 29 | 100% | 2023-03-20 14:00 | 2023-03-20 17:00 | 3h | Vũ Vương Vinh; Lâm Nhất Đức Duy | 6h | 6h | 656,250 | 656,250 | 656,250 |
| 31 | 6.5 | Giao diện quản lý thông tin thẻ Etag |  | 3h | 2023-03-21 08:00 A | 2023-03-21 11:00 A | 30 | 100% | 2023-03-21 08:00 | 2023-03-21 11:00 | 3h | Vũ Vương Vinh; Lâm Nhất Đức Duy | 6h | 6h | 656,250 | 656,250 | 656,250 |
| 32 | 6.6 | Giao diện quản lý hóa đơn |  | 3h | 2023-03-21 11:00 A | 2023-03-21 15:00 A | 31 | 100% | 2023-03-21 11:00 | 2023-03-21 15:00 | 3h | Vũ Vương Vinh; Lâm Nhất Đức Duy | 6h | 6h | 656,250 | 656,250 | 656,250 |
| 33 | 6.7 | Hoàn thành thiết kế giao diện | milestone | 0d | 2023-03-21 15:00 A | 2023-03-21 15:00 A | 32 | 100% | 2023-03-21 15:00 | 2023-03-21 15:00 | 0d |  |  |  |  |  |  |
| 34 | 7 | **Develop phần mềm + viết test case** |  | 15d | 2023-03-24 08:00 A | 2023-04-13 17:00 A |  | 100% | 2023-03-24 08:00 | 2023-04-13 17:00 | 15d |  | 379h | 379h | 50,218,750 | 50,218,750 | 50,218,750 |
| 35 | 7.1 | Phát triển phần mềm |  | 15d | 2023-03-24 08:00 A | 2023-04-13 17:00 A | 25 | 100% | 2023-03-24 08:00 | 2023-04-13 17:00 | 15d | Hoàng Nhật Minh; Lâm Hồ Thiên Tống; Vũ Vương Vinh | 360h | 360h | 48,750,000 | 48,750,000 | 48,750,000 |
| 36 | 7.2 | **Viết test case** |  | 1.25d | 2023-03-24 08:00 A | 2023-03-27 10:00 A |  | 100% | 2023-03-24 08:00 | 2023-03-27 10:00 | 1.25d |  | 19h | 19h | 1,468,750 | 1,468,750 | 1,468,750 |
| 37 | 7.2.1 | **Viết test case cho chức năng quản lý user** |  | 0.5d | 2023-03-24 08:00 A | 2023-03-24 12:00 A |  | 100% | 2023-03-24 08:00 | 2023-03-24 12:00 | 0.5d |  | 4h | 4h | 250,000 | 250,000 | 250,000 |
| 38 | 7.2.1.1 | Viết test case tạo user |  | 1h | 2023-03-24 08:00 A | 2023-03-24 09:00 A | 25 | 100% | 2023-03-24 08:00 | 2023-03-24 09:00 | 1h | Phạm Trịnh Ngọc Hân | 1h | 1h | 62,500 | 62,500 | 62,500 |
| 39 | 7.2.1.2 | Viết test case phân quyền user |  | 1h | 2023-03-24 09:00 A | 2023-03-24 10:00 A | 38 | 100% | 2023-03-24 09:00 | 2023-03-24 10:00 | 1h | Phạm Trịnh Ngọc Hân | 1h | 1h | 62,500 | 62,500 | 62,500 |
| 40 | 7.2.1.3 | Viết test case chỉnh sửa cho user |  | 1h | 2023-03-24 10:00 A | 2023-03-24 11:00 A | 39 | 100% | 2023-03-24 10:00 | 2023-03-24 11:00 | 1h | Phạm Trịnh Ngọc Hân | 1h | 1h | 62,500 | 62,500 | 62,500 |
| 41 | 7.2.1.4 | Viết test case xóa user |  | 1h | 2023-03-24 11:00 A | 2023-03-24 12:00 A | 40 | 100% | 2023-03-24 11:00 | 2023-03-24 12:00 | 1h | Phạm Trịnh Ngọc Hân | 1h | 1h | 62,500 | 62,500 | 62,500 |
| 42 | 7.2.2 | **Viết test case cho module quản lý nhân viên** |  | 0.25d | 2023-03-24 13:00 A | 2023-03-24 15:00 A |  | 100% | 2023-03-24 13:00 | 2023-03-24 15:00 | 0.25d |  | 2h | 2h | 125,000 | 125,000 | 125,000 |
| 43 | 7.2.2.1 | Viết test case nhập thông tin nhân viên |  | 1h | 2023-03-24 13:00 A | 2023-03-24 14:00 A | 41 | 100% | 2023-03-24 13:00 | 2023-03-24 14:00 | 1h | Phạm Trịnh Ngọc Hân | 1h | 1h | 62,500 | 62,500 | 62,500 |
| 44 | 7.2.2.2 | Viết test case chỉnh sửa thông tin nhân viên |  | 1h | 2023-03-24 14:00 A | 2023-03-24 15:00 A | 43 | 100% | 2023-03-24 14:00 | 2023-03-24 15:00 | 1h | Phạm Trịnh Ngọc Hân | 1h | 1h | 62,500 | 62,500 | 62,500 |
| 45 | 7.2.3 | Viết test case xóa thông tin nhân viên |  | 1h | 2023-03-24 15:00 A | 2023-03-24 16:00 A | 44 | 100% | 2023-03-24 15:00 | 2023-03-24 16:00 | 1h | Phạm Trịnh Ngọc Hân | 1h | 1h | 62,500 | 62,500 | 62,500 |
| 46 | 7.2.4 | **Viết test case cho module quản lý thông tin khách hàng** |  | 0.38d | 2023-03-24 16:00 A | 2023-03-27 10:00 A |  | 100% | 2023-03-24 16:00 | 2023-03-27 10:00 | 0.38d |  | 3h | 3h | 187,500 | 187,500 | 187,500 |
| 47 | 7.2.4.1 | Viết test case nhập thông tin khách hàng |  | 1h | 2023-03-24 16:00 A | 2023-03-24 17:00 A | 45 | 100% | 2023-03-24 16:00 | 2023-03-24 17:00 | 1h | Phạm Trịnh Ngọc Hân | 1h | 1h | 62,500 | 62,500 | 62,500 |
| 48 | 7.2.4.2 | Viết test case chỉnh sửa thông tin khách hàng |  | 1h | 2023-03-27 08:00 A | 2023-03-27 09:00 A | 47 | 100% | 2023-03-27 08:00 | 2023-03-27 09:00 | 1h | Phạm Trịnh Ngọc Hân | 1h | 1h | 62,500 | 62,500 | 62,500 |
| 49 | 7.2.4.3 | Viết test case xóa thông tin khách hàng |  | 1h | 2023-03-27 09:00 A | 2023-03-27 10:00 A | 48 | 100% | 2023-03-27 09:00 | 2023-03-27 10:00 | 1h | Phạm Trịnh Ngọc Hân | 1h | 1h | 62,500 | 62,500 | 62,500 |

| ID | WBS | Task | Type | Duration | Start | Finish | Predecessors | Complete | Remaining | Baseline start | Baseline finish | Baseline duration | Total slack | Resources | Work | Actual work | Cost | Baseline cost | Actual cost |
| --- | --- | --- | --- | --- | --- | --- | --- | --- | --- | --- | --- | --- | --- | --- | --- | --- | --- | --- | --- |
| 50 | 7.2.5 | **Viết test case cho module quản lý xe** |  | 0.38d | 2023-03-24 08:00 A | 2023-03-24 11:00 A |  | 100% |  | 2023-03-24 08:00 | 2023-03-24 11:00 | 0.38d |  |  | 3h | 3h | 281,250 | 281,250 | 281,250 |
| 51 | 7.2.5.1 | Viết test case nhập thông tin xe |  | 1h | 2023-03-24 08:00 A | 2023-03-24 09:00 A | 25 | 100% |  | 2023-03-24 08:00 | 2023-03-24 09:00 | 1h |  | Vũ Tường Nguyên | 1h | 1h | 93,750 | 93,750 | 93,750 |
| 52 | 7.2.5.2 | Viết test case chỉnh sửa thông tin xe |  | 1h | 2023-03-24 09:00 A | 2023-03-24 10:00 A | 51 | 100% |  | 2023-03-24 09:00 | 2023-03-24 10:00 | 1h |  | Vũ Tường Nguyên | 1h | 1h | 93,750 | 93,750 | 93,750 |
| 53 | 7.2.5.3 | Viết test case xóa thông tin xe |  | 1h | 2023-03-24 10:00 A | 2023-03-24 11:00 A | 52 | 100% |  | 2023-03-24 10:00 | 2023-03-24 11:00 | 1h |  | Vũ Tường Nguyên | 1h | 1h | 93,750 | 93,750 | 93,750 |
| 54 | 7.2.6 | **Viết test case cho module quản lý thông tin thẻ Etag** |  | 0.38d | 2023-03-24 11:00 A | 2023-03-24 15:00 A |  | 100% |  | 2023-03-24 11:00 | 2023-03-24 15:00 | 0.38d |  |  | 3h | 3h | 281,250 | 281,250 | 281,250 |
| 55 | 7.2.6.1 | Viết test case tạo thẻ Etag |  | 1h | 2023-03-24 11:00 A | 2023-03-24 12:00 A | 53 | 100% |  | 2023-03-24 11:00 | 2023-03-24 12:00 | 1h |  | Vũ Tường Nguyên | 1h | 1h | 93,750 | 93,750 | 93,750 |
| 56 | 7.2.6.2 | Viết test case chỉnh sửa thông tin thẻ Etag |  | 1h | 2023-03-24 13:00 A | 2023-03-24 14:00 A | 55 | 100% |  | 2023-03-24 13:00 | 2023-03-24 14:00 | 1h |  | Vũ Tường Nguyên | 1h | 1h | 93,750 | 93,750 | 93,750 |
| 57 | 7.2.6.3 | Viết test case xóa thông tin thẻ Etag |  | 1h | 2023-03-24 14:00 A | 2023-03-24 15:00 A | 56 | 100% |  | 2023-03-24 14:00 | 2023-03-24 15:00 | 1h |  | Vũ Tường Nguyên | 1h | 1h | 93,750 | 93,750 | 93,750 |
| 58 | 7.2.7 | **Viết test case cho module quản lý hóa đơn** |  | 0.38d | 2023-03-24 15:00 A | 2023-03-27 09:00 A |  | 100% |  | 2023-03-24 15:00 | 2023-03-27 09:00 | 0.38d |  |  | 3h | 3h | 281,250 | 281,250 | 281,250 |
| 59 | 7.2.7.1 | Viết test case thông báo đã thu tiền phí |  | 1h | 2023-03-24 15:00 A | 2023-03-24 16:00 A | 57 | 100% |  | 2023-03-24 15:00 | 2023-03-24 16:00 | 1h |  | Vũ Tường Nguyên | 1h | 1h | 93,750 | 93,750 | 93,750 |
| 60 | 7.2.7.2 | Viết test case thông báo tài khoản không đủ tiền |  | 1h | 2023-03-24 16:00 A | 2023-03-24 17:00 A | 59 | 100% |  | 2023-03-24 16:00 | 2023-03-24 17:00 | 1h |  | Vũ Tường Nguyên | 1h | 1h | 93,750 | 93,750 | 93,750 |
| 61 | 7.2.7.3 | Viết test case in hóa đơn |  | 1h | 2023-03-27 08:00 A | 2023-03-27 09:00 A | 60 | 100% |  | 2023-03-27 08:00 | 2023-03-27 09:00 | 1h |  | Vũ Tường Nguyên | 1h | 1h | 93,750 | 93,750 | 93,750 |
| 62 | 7.3 | Hoàn tất Develop và Demo | milestone | 0d | 2023-04-13 17:00 A | 2023-04-13 17:00 A | 35 | 100% |  | 2023-04-13 17:00 | 2023-04-13 17:00 | 0d |  |  |  |  |  |  |  |
| 63 | 8 | **Testing** |  | 9.5d | 2023-04-13 17:00 A | 2023-04-27 12:00 |  | 53% | 4.5d | 2023-04-13 17:00 | 2023-04-27 12:00 | 9.5d | 0d |  | 196h | 100h | 22,125,000 | 22,125,000 | 10,875,000 |
| 64 | 8.1 | **Test chức năng quản lý user** |  | 2d | 2023-04-13 17:00 A | 2023-04-17 17:00 A |  | 100% |  | 2023-04-13 17:00 | 2023-04-17 17:00 | 2d |  |  | 40h | 40h | 4,500,000 | 4,500,000 | 4,500,000 |
| 65 | 8.1.1 | Test chức năng tạo user |  | 0.5d | 2023-04-13 17:00 A | 2023-04-14 12:00 A | 62 | 100% |  | 2023-04-13 17:00 | 2023-04-14 12:00 | 0.5d |  | Phạm Trịnh Ngọc Hân; Lâm Nhất Đức Duy; Nguyễn Thị Kim Kiều | 8h | 8h | 1,000,000 | 1,000,000 | 1,000,000 |
| 66 | 8.1.2 | Test chức năng phân quyền user |  | 0.5d | 2023-04-14 12:00 A | 2023-04-14 17:00 A | 65 | 100% |  | 2023-04-14 12:00 | 2023-04-14 17:00 | 0.5d |  | Phạm Trịnh Ngọc Hân; Lâm Nhất Đức Duy; Nguyễn Thị Kim Kiều | 8h | 8h | 1,000,000 | 1,000,000 | 1,000,000 |
| 67 | 8.1.3 | Test chức năng chỉnh sửa cho user |  | 0.5d | 2023-04-17 08:00 A | 2023-04-17 12:00 A | 66 | 100% |  | 2023-04-17 08:00 | 2023-04-17 12:00 | 0.5d |  | Phạm Trịnh Ngọc Hân; Lâm Nhất Đức Duy; Nguyễn Thị Kim Kiều | 12h | 12h | 1,250,000 | 1,250,000 | 1,250,000 |
| 68 | 8.1.4 | Test chức năng xóa user |  | 0.5d | 2023-04-17 13:00 A | 2023-04-17 17:00 A | 67 | 100% |  | 2023-04-17 13:00 | 2023-04-17 17:00 | 0.5d |  | Phạm Trịnh Ngọc Hân; Lâm Nhất Đức Duy; Nguyễn Thị Kim Kiều | 12h | 12h | 1,250,000 | 1,250,000 | 1,250,000 |
| 69 | 8.2 | **Test module quản lý nhân viên** |  | 1.5d | 2023-04-18 08:00 A | 2023-04-19 12:00 A |  | 100% |  | 2023-04-18 08:00 | 2023-04-19 12:00 | 1.5d |  |  | 24h | 24h | 2,625,000 | 2,625,000 | 2,625,000 |
| 70 | 8.2.1 | Test form nhập thông tin nhân viên |  | 0.5d | 2023-04-18 08:00 A | 2023-04-18 12:00 A | 68 | 100% |  | 2023-04-18 08:00 | 2023-04-18 12:00 | 0.5d |  | Nguyễn Thị Kim Kiều; Phạm Trịnh Ngọc Hân | 8h | 8h | 875,000 | 875,000 | 875,000 |
| 71 | 8.2.2 | Test form chỉnh sửa thông tin nhân viên |  | 0.5d | 2023-04-18 13:00 A | 2023-04-18 17:00 A | 70 | 100% |  | 2023-04-18 13:00 | 2023-04-18 17:00 | 0.5d |  | Nguyễn Thị Kim Kiều; Phạm Trịnh Ngọc Hân | 8h | 8h | 875,000 | 875,000 | 875,000 |
| 72 | 8.2.3 | Test form xóa thông tin nhân viên |  | 0.5d | 2023-04-19 08:00 A | 2023-04-19 12:00 A | 71 | 100% |  | 2023-04-19 08:00 | 2023-04-19 12:00 | 0.5d |  | Nguyễn Thị Kim Kiều; Phạm Trịnh Ngọc Hân | 8h | 8h | 875,000 | 875,000 | 875,000 |
| 73 | 8.3 | **Test module quản lý thông tin khách hàng** |  | 1.5d | 2023-04-19 13:00 A | 2023-04-20 17:00 A |  | 100% |  | 2023-04-19 13:00 | 2023-04-20 17:00 | 1.5d |  |  | 36h | 36h | 3,750,000 | 3,750,000 | 3,750,000 |
| 74 | 8.3.1 | Test form nhập thông tin khách hàng |  | 0.5d | 2023-04-19 13:00 A | 2023-04-19 17:00 A | 72 | 100% |  | 2023-04-19 13:00 | 2023-04-19 17:00 | 0.5d |  | Lâm Nhất Đức Duy; Nguyễn Thị Kim Kiều; Phạm Trịnh Ngọc Hân | 12h | 12h | 1,250,000 | 1,250,000 | 1,250,000 |
| 75 | 8.3.2 | Test form chỉnh sửa thông tin khách hàng |  | 0.5d | 2023-04-20 08:00 A | 2023-04-20 12:00 A | 74 | 100% |  | 2023-04-20 08:00 | 2023-04-20 12:00 | 0.5d |  | Lâm Nhất Đức Duy; Nguyễn Thị Kim Kiều; Phạm Trịnh Ngọc Hân | 12h | 12h | 1,250,000 | 1,250,000 | 1,250,000 |
| 76 | 8.3.3 | Test form xóa thông tin khách hàng |  | 0.5d | 2023-04-20 13:00 A | 2023-04-20 17:00 A | 75 | 100% |  | 2023-04-20 13:00 | 2023-04-20 17:00 | 0.5d |  | Lâm Nhất Đức Duy; Nguyễn Thị Kim Kiều; Phạm Trịnh Ngọc Hân | 12h | 12h | 1,250,000 | 1,250,000 | 1,250,000 |

| ID | WBS | Task | Type | Duration | Start | Finish | Predecessors | Complete | Remaining | Baseline start | Baseline finish | Baseline duration | Total slack | Constraint | Calendar | Resources | Work | Actual work | Cost | Baseline cost | Actual cost |
| --- | --- | --- | --- | --- | --- | --- | --- | --- | --- | --- | --- | --- | --- | --- | --- | --- | --- | --- | --- | --- | --- |
| 77 | 8.4 | **Test module quản lý thông tin xe** |  | 1.5d | 2023-04-21 08:00 | 2023-04-24 12:00 |  |  |  | 2023-04-21 08:00 | 2023-04-24 12:00 | 1.5d | 0d |  |  |  | 36h |  | 4,125,000 | 4,125,000 |  |
| 78 | 8.4.1 | Test form nhập thông tin xe |  | 0.5d | 2023-04-21 08:00 | 2023-04-21 12:00 | 76 |  |  | 2023-04-21 08:00 | 2023-04-21 12:00 | 0.5d | 0d |  |  | Lâm Nhất Đức Duy; Nguyễn Thị Kim Kiều; Vũ Tường Nguyên | 12h |  | 1,375,000 | 1,375,000 |  |
| 79 | 8.4.2 | Test form chỉnh sửa thông tin xe |  | 0.5d | 2023-04-21 13:00 | 2023-04-21 17:00 | 78 |  |  | 2023-04-21 13:00 | 2023-04-21 17:00 | 0.5d | 0d |  |  | Lâm Nhất Đức Duy; Nguyễn Thị Kim Kiều; Vũ Tường Nguyên | 12h |  | 1,375,000 | 1,375,000 |  |
| 80 | 8.4.3 | Test form xóa thông tin xe |  | 0.5d | 2023-04-24 08:00 | 2023-04-24 12:00 | 79 |  |  | 2023-04-24 08:00 | 2023-04-24 12:00 | 0.5d | 0d |  |  | Lâm Nhất Đức Duy; Nguyễn Thị Kim Kiều; Vũ Tường Nguyên | 12h |  | 1,375,000 | 1,375,000 |  |
| 81 | 8.5 | **Test module quản lý thông tin thẻ Etag** |  | 1.5d | 2023-04-24 13:00 | 2023-04-25 17:00 |  |  |  | 2023-04-24 13:00 | 2023-04-25 17:00 | 1.5d | 0d |  |  |  | 36h |  | 4,125,000 | 4,125,000 |  |
| 82 | 8.5.1 | Test form tạo thẻ Etag |  | 0.5d | 2023-04-24 13:00 | 2023-04-24 17:00 | 80 |  |  | 2023-04-24 13:00 | 2023-04-24 17:00 | 0.5d | 0d |  |  | Lâm Nhất Đức Duy; Nguyễn Thị Kim Kiều; Vũ Tường Nguyên | 12h |  | 1,375,000 | 1,375,000 |  |
| 83 | 8.5.2 | Test form chỉnh sửa thông tin thẻ Etag |  | 0.5d | 2023-04-25 08:00 | 2023-04-25 12:00 | 82 |  |  | 2023-04-25 08:00 | 2023-04-25 12:00 | 0.5d | 0d |  |  | Lâm Nhất Đức Duy; Nguyễn Thị Kim Kiều; Vũ Tường Nguyên | 12h |  | 1,375,000 | 1,375,000 |  |
| 84 | 8.5.3 | Test form xóa thông tin thẻ Etag |  | 0.5d | 2023-04-25 13:00 | 2023-04-25 17:00 | 83 |  |  | 2023-04-25 13:00 | 2023-04-25 17:00 | 0.5d | 0d |  |  | Lâm Nhất Đức Duy; Nguyễn Thị Kim Kiều; Vũ Tường Nguyên | 12h |  | 1,375,000 | 1,375,000 |  |
| 85 | 8.6 | **Test module quản lý hóa đơn** |  | 1.5d | 2023-04-26 08:00 | 2023-04-27 12:00 |  |  |  | 2023-04-26 08:00 | 2023-04-27 12:00 | 1.5d | 0d |  |  |  | 24h |  | 3,000,000 | 3,000,000 |  |
| 86 | 8.6.1 | Test chức năng thu tiền phí |  | 0.5d | 2023-04-26 08:00 | 2023-04-26 12:00 | 84 |  |  | 2023-04-26 08:00 | 2023-04-26 12:00 | 0.5d | 0d |  |  | Nguyễn Thị Kim Kiều; Vũ Tường Nguyên | 8h |  | 1,000,000 | 1,000,000 |  |
| 87 | 8.6.2 | Test form thông báo tài khoản không còn đủ tiền |  | 0.5d | 2023-04-26 13:00 | 2023-04-26 17:00 | 86 |  |  | 2023-04-26 13:00 | 2023-04-26 17:00 | 0.5d | 0d |  |  | Nguyễn Thị Kim Kiều; Vũ Tường Nguyên | 8h |  | 1,000,000 | 1,000,000 |  |
| 88 | 8.6.3 | Test form in hóa đơn |  | 0.5d | 2023-04-27 08:00 | 2023-04-27 12:00 | 87 |  |  | 2023-04-27 08:00 | 2023-04-27 12:00 | 0.5d | 0d |  |  | Nguyễn Thị Kim Kiều; Vũ Tường Nguyên | 8h |  | 1,000,000 | 1,000,000 |  |
| 89 | 8.7 | Hoàn thành kiểm thử | milestone | 0d | 2023-04-27 12:00 | 2023-04-27 12:00 | 88 |  |  | 2023-04-27 12:00 | 2023-04-27 12:00 | 0d | 0d |  |  |  |  |  |  |  |  |
| 90 | 9 | Training cho người dùng |  | 5d | 2023-04-27 13:00 | 2023-05-08 12:00 | 89 |  |  | 2023-04-27 13:00 | 2023-05-08 12:00 | 5d | 0d |  |  | Hoàng Nhật Minh; Lâm Hồ Thiên Tống; Vũ Vương Vinh; Nguyễn Thị Kim Kiều | 160h |  | 22,500,000 | 22,500,000 |  |
| 91 | 10 | Triển khai phần mềm trên ứng dụng |  | 6d | 2023-05-08 13:00 | 2023-05-16 12:00 | 90 |  |  | 2023-05-08 13:00 | 2023-05-16 12:00 | 6d | 0d |  |  | Hoàng Nhật Minh; Lâm Hồ Thiên Tống; Vũ Vương Vinh | 144h |  | 19,500,000 | 19,500,000 |  |
| 92 | 11 | Test và phê chuẩn phần mềm trên ứng dụng |  | 4d | 2023-05-16 13:00 | 2023-05-22 12:00 | 91 |  |  | 2023-05-16 13:00 | 2023-05-22 12:00 | 4d | 0d |  |  | Lâm Hồ Thiên Tống; Nguyễn Thị Kim Kiều; Phạm Trịnh Ngọc Hân; Vũ Tường Nguyên | 128h |  | 15,000,000 | 15,000,000 |  |
| 93 | 12 | Go - live |  | 1d | 2023-05-22 13:00 | 2023-05-23 12:00 | 92 |  |  | 2023-05-22 13:00 | 2023-05-23 12:00 | 1d | 0d |  |  | Lâm Hồ Thiên Tống; Nguyễn Thị Kim Kiều | 16h |  | 2,500,000 | 2,500,000 |  |
| 94 | 13 | **Lịch Họp Giao Ban** |  | 2.75d | 2023-03-06 15:00 A | 2023-05-22 17:00 |  | 56% | 1.22d | 2023-03-06 15:00 | 2023-05-22 17:00 | 2.75d | 0d |  | LichHop |  | 128h | 64h | 16,100,000 | 16,100,000 | 8,050,000 |
| 95 | 13.1 | Lịch Họp Giao Ban 1 |  | 2h | 2023-03-06 15:00 A | 2023-03-06 17:00 A |  | 100% |  | 2023-03-06 15:00 | 2023-03-06 17:00 | 2h |  | start no earlier than 2023-03-06 08:00 | LichHop | Giấy in [0.5 Gram]; Hoàng Nhật Minh; Lâm Hồ Thiên Tống; Lâm Nhất Đức Duy; Lê Trần Duy Tài; Máy in [1 Lượt]; Mực in [0.5 Hộp]; Nguyễn Thị Kim Kiều; Phạm Trịnh Ngọc Hân; Vũ Tường Nguyên; Vũ Vương Vinh | 16h | 16h | 2,012,500 | 2,012,500 | 2,012,500 |
| 96 | 13.2 | Lịch Họp Giao Ban 2 |  | 4h | 2023-03-13 15:00 A | 2023-03-20 17:00 A |  | 100% |  | 2023-03-13 15:00 | 2023-03-20 17:00 | 4h |  | start no earlier than 2023-03-13 08:00 | LichHop | Giấy in [0.5 Gram]; Hoàng Nhật Minh; Lâm Hồ Thiên Tống; Lâm Nhất Đức Duy; Lê Trần Duy Tài; Máy in [1 Lượt]; Mực in [0.5 Hộp]; Nguyễn Thị Kim Kiều; Phạm Trịnh Ngọc Hân; Vũ Tường Nguyên; Vũ Vương Vinh | 16h | 16h | 2,012,500 | 2,012,500 | 2,012,500 |
| 97 | 13.3 | Lịch Họp Giao Ban 3 |  | 2h | 2023-03-20 15:00 A | 2023-03-20 17:00 A |  | 100% |  | 2023-03-20 15:00 | 2023-03-20 17:00 | 2h |  | start no earlier than 2023-03-20 08:00 | LichHop | Giấy in [0.5 Gram]; Hoàng Nhật Minh; Lâm Hồ Thiên Tống; Lâm Nhất Đức Duy; Lê Trần Duy Tài; Máy in [1 Lượt]; Mực in [0.5 Hộp]; Nguyễn Thị Kim Kiều; Phạm Trịnh Ngọc Hân; Vũ Tường Nguyên; Vũ Vương Vinh | 16h | 16h | 2,012,500 | 2,012,500 | 2,012,500 |
| 98 | 13.4 | Lịch Họp Giao Ban 4 |  | 2h | 2023-04-03 15:00 A | 2023-04-03 17:00 A |  | 100% |  | 2023-04-03 15:00 | 2023-04-03 17:00 | 2h |  | start no earlier than 2023-04-03 08:00 | LichHop | Giấy in [0.5 Gram]; Hoàng Nhật Minh; Lâm Hồ Thiên Tống; Lâm Nhất Đức Duy; Lê Trần Duy Tài; Máy in [1 Lượt]; Mực in [0.5 Hộp]; Nguyễn Thị Kim Kiều; Phạm Trịnh Ngọc Hân; Vũ Tường Nguyên; Vũ Vương Vinh | 16h | 16h | 2,012,500 | 2,012,500 | 2,012,500 |
| 99 | 13.5 | Lịch Họp Giao Ban 5 |  | 2h | 2023-04-24 15:00 | 2023-04-24 17:00 |  |  |  | 2023-04-24 15:00 | 2023-04-24 17:00 | 2h | 0.75d | start no earlier than 2023-04-24 08:00 | LichHop | Giấy in [0.5 Gram]; Hoàng Nhật Minh; Lâm Hồ Thiên Tống; Lâm Nhất Đức Duy; Lê Trần Duy Tài; Máy in [1 Lượt]; Mực in [0.5 Hộp]; Nguyễn Thị Kim Kiều; Phạm Trịnh Ngọc Hân; Vũ Tường Nguyên; Vũ Vương Vinh | 16h |  | 2,012,500 | 2,012,500 |  |
| 100 | 13.6 | Lịch Họp Giao Ban 6 |  | 2h | 2023-05-08 15:00 | 2023-05-08 17:00 |  |  |  | 2023-05-08 15:00 | 2023-05-08 17:00 | 2h | 0.5d | start no earlier than 2023-05-08 08:00 | LichHop | Giấy in [0.5 Gram]; Hoàng Nhật Minh; Lâm Hồ Thiên Tống; Lâm Nhất Đức Duy; Lê Trần Duy Tài; Máy in [1 Lượt]; Mực in [0.5 Hộp]; Nguyễn Thị Kim Kiều; Phạm Trịnh Ngọc Hân; Vũ Tường Nguyên; Vũ Vương Vinh | 16h |  | 2,012,500 | 2,012,500 |  |
| 101 | 13.7 | Lịch Họp Giao Ban 7 |  | 2h | 2023-05-15 15:00 | 2023-05-15 17:00 |  |  |  | 2023-05-15 15:00 | 2023-05-15 17:00 | 2h | 0.25d | start no earlier than 2023-05-15 08:00 | LichHop | Giấy in [0.5 Gram]; Hoàng Nhật Minh; Lâm Hồ Thiên Tống; Lâm Nhất Đức Duy; Lê Trần Duy Tài; Máy in [1 Lượt]; Mực in [0.5 Hộp]; Nguyễn Thị Kim Kiều; Phạm Trịnh Ngọc Hân; Vũ Tường Nguyên; Vũ Vương Vinh | 16h |  | 2,012,500 | 2,012,500 |  |
| 102 | 13.8 | Lịch Họp Giao Ban 8 |  | 2h | 2023-05-22 15:00 | 2023-05-22 17:00 |  |  |  | 2023-05-22 15:00 | 2023-05-22 17:00 | 2h | 0d | start no earlier than 2023-05-22 08:00 | LichHop | Giấy in [0.5 Gram]; Hoàng Nhật Minh; Lâm Hồ Thiên Tống; Lâm Nhất Đức Duy; Lê Trần Duy Tài; Máy in [1 Lượt]; Mực in [0.5 Hộp]; Nguyễn Thị Kim Kiều; Phạm Trịnh Ngọc Hân; Vũ Tường Nguyên; Vũ Vương Vinh | 16h |  | 2,012,500 | 2,012,500 |  |
